# ARKartSmart

Schedule from MS Project, 2015-11-02 to 2016-08-10, costs in $.

## Calendars

- Standard: Mon-Fri 08:00-12:00, 13:00-17:00; Sat-Sun off.

## Resources

| Resource | Rate |
| --- | --- |
| Project Manager | 150 |
| Senior Software Engineer | 150 |
| Installation Support | 75 |
| Network Engineer | 150 |
| Systems Administrator | 150 |
| Software Team | 450 |
| Tablets | 400 |
| HQ Servers | 10000 |
| Store Servers | 500 |
| Barcode Scanners | 100 |
| Charging Stations | 2000 |
| Mounting Hardware | 4 |

## Schedule

| ID | WBS | Task | Duration | Start | Finish | Predecessors | Total slack | Free slack | Resources | Work | Cost |
| --- | --- | --- | --- | --- | --- | --- | --- | --- | --- | --- | --- |
| 1 | 1 | **ARKartSmart Project Deployment** | 202.5d | 2015-11-02 | 2016-08-10 |  | 0d |  |  | 3294h | 2,636,400 |
| 2 | 1.1 | **Hardware, etc** | 202.5d | 2015-11-02 | 2016-08-10 |  | 0d |  |  | 1742h | 2,280,000 |
| 3 | 1.1.1 | **Tablets** | 114.5d | 2015-11-02 | 2016-04-08 |  | 76.5d |  |  | 776h | 1,676,800 |
| 4 | 1.1.1.1 | **Acquire Nexus 9 Tablets** | 10d | 2015-11-02 | 2015-11-16 |  | 85d | 0d | Tablets [400000%] | 8h | 1,601,200 |
| 5 | 1.1.1.1.1 | Order/Purchase | 8h | 2015-11-04 | 2015-11-05 |  | 90.5d |  | Project Manager | 8h | 1,200 |
| 6 | 1.1.1.1.2 | Shipping | 80h | 2015-11-02 | 2015-11-16 |  | 85d |  |  |  |  |
| 7 | 1.1.1.2 | Install Custom ROM | 40h | 2015-11-16 | 2015-11-23 | 4 | 85d | 0d | Software Team | 40h | 18,000 |
| 8 | 1.1.1.3 | Inspect & Test | 40h | 2015-11-23 | 2015-11-30 | 7 | 85d | 0d | Installation Support | 40h | 3,000 |
| 9 | 1.1.1.4 | Test Network Connectivity | 20h | 2015-11-30 | 2015-12-02 | 8, 23 | 85d | 0d | Network Engineer | 20h | 3,000 |
| 10 | 1.1.1.5 | Integrate with ARKSmart Network | 20h | 2015-12-03 | 2015-12-07 | 9 | 85d | 0d | Network Engineer | 20h | 3,000 |
| 11 | 1.1.1.6 | Mount on Carts | 648h | 2015-12-18 | 2016-04-08 | 37, 10 | 76.5d |  | Installation Support | 648h | 48,600 |
| 12 | 1.1.2 | **Servers** | 16.5d | 2015-11-02 | 2015-11-24 |  | 88.5d | 0d |  | 68h | 35,200 |
| 13 | 1.1.2.1 | **Acquire HQ Hardware** | 10d | 2015-11-02 | 2015-11-16 |  | 88.5d | 0d | HQ Servers [200%] | 8h | 21,200 |
| 14 | 1.1.2.1.1 | Order/Purchase | 8h | 2015-11-02 | 2015-11-03 |  | 97.5d |  | Project Manager | 8h | 1,200 |
| 15 | 1.1.2.1.2 | Shipping | 80h | 2015-11-02 | 2015-11-16 |  | 88.5d |  |  |  |  |
| 16 | 1.1.2.2 | **Acquire Store Hardware** | 10d | 2015-11-02 | 2015-11-16 |  | 88.5d | 0d | Store Servers [1000%] | 8h | 6,200 |
| 17 | 1.1.2.2.1 | Order/Purchase | 8h | 2015-11-03 | 2015-11-04 |  | 95d |  | Project Manager | 8h | 1,200 |
| 18 | 1.1.2.2.2 | Shipping | 80h | 2015-11-02 | 2015-11-16 |  | 88.5d |  |  |  |  |
| 19 | 1.1.2.3 | Rack Mount Hardware | 12h | 2015-11-16 | 2015-11-17 | 13, 16 | 88.5d | 0d | Systems Administrator | 12h | 1,800 |
| 20 | 1.1.2.4 | Install OS | 12h | 2015-11-18 | 2015-11-19 | 19 | 88.5d | 0d | Systems Administrator | 12h | 1,800 |
| 21 | 1.1.2.5 | Patch OS | 12h | 2015-11-19 | 2015-11-20 | 20 | 88.5d | 0d | Systems Administrator | 12h | 1,800 |
| 22 | 1.1.2.6 | Configure Rack Mounted Networking | 8h | 2015-11-23 | 2015-11-23 | 21 | 88.5d | 0d | Network Engineer | 8h | 1,200 |
| 23 | 1.1.2.7 | Test Rack Mounted Network Connectivity | 8h | 2015-11-24 | 2015-11-24 | 22 | 88.5d | 3.5d | Network Engineer | 8h | 1,200 |
| 24 | 1.1.3 | **Barcode Scanners** | 154d | 2015-11-02 | 2016-06-03 |  | 37d |  |  | 248h | 419,200 |
| 25 | 1.1.3.1 | **Acquire Barcode Scanners** | 10d | 2015-11-02 | 2015-11-16 |  | 45.5d | 0d | Barcode Scanners [400000%] | 8h | 401,200 |
| 26 | 1.1.3.1.1 | Order/Purchase | 8h | 2015-11-05 | 2015-11-06 |  | 155.5d |  | Project Manager | 8h | 1,200 |
| 27 | 1.1.3.1.2 | Shipping | 80h | 2015-11-02 | 2015-11-16 |  | 151d |  |  |  |  |
| 28 | 1.1.3.2 | Inspect & Test | 40h | 2015-11-30 | 2015-12-07 | 25 | 45.5d | 8.5d | Installation Support | 40h | 3,000 |
| 29 | 1.1.3.3 | Mount on Carts | 200h | 2016-04-29 | 2016-06-03 | 37, 28 | 37d |  | Installation Support | 200h | 15,000 |

| ID | WBS | Task | Duration | Start | Finish | Predecessors | Total slack | Free slack | Resources | Work | Cost |
| --- | --- | --- | --- | --- | --- | --- | --- | --- | --- | --- | --- |
| 30 | 1.1.4 | **Charging Stations** | 129d | 2015-11-02 | 2016-04-29 |  | 73.5d |  |  | 100h | 28,100 |
| 31 | 1.1.4.1 | **Acquire Charging Stations** | 10d | 2015-11-02 | 2015-11-16 |  | 73.5d |  | Charging Stations [1000%] | 8h | 21,200 |
| 32 | 1.1.4.1.1 | Order/Purchase | 8h | 2015-11-02 | 2015-11-09 |  | 185.5d | 0d | Project Manager | 8h | 1,200 |
| 33 | 1.1.4.1.2 | Shipping | 80h | 2015-11-02 | 2015-11-16 |  | 192.5d |  |  |  |  |
| 34 | 1.1.4.2 | Assemble | 40h | 2015-11-10 | 2015-11-16 | 32 | 185.5d | 0d | Installation Support | 40h | 3,000 |
| 35 | 1.1.4.3 | Install | 40h | 2015-11-17 | 2016-04-27 | 34 | 73.5d | 0d | Installation Support | 40h | 3,000 |
| 36 | 1.1.4.4 | Test | 12h | 2016-04-28 | 2016-04-29 | 35 | 73.5d | 185.5d | Installation Support | 12h | 900 |
| 37 | 1.1.5 | **Cart Mounting** | 33.5d | 2015-11-02 | 2015-12-17 |  | 37d | 0d |  | 80h | 22,600 |
| 38 | 1.1.5.1 | **Acquire Mounting Hardware** | 10d | 2015-11-02 | 2015-11-16 |  | 41d |  | Mounting Hardware [400000%] | 8h | 17,200 |
| 39 | 1.1.5.1.1 | Order/Purchase | 8h | 2015-11-06 | 2015-11-09 |  | 94.5d | 0d | Project Manager | 8h | 1,200 |
| 40 | 1.1.5.1.2 | Shipping | 80h | 2015-11-02 | 2015-11-16 |  | 100d |  |  |  |  |
| 41 | 1.1.5.2 | Inspect Hardware | 72h | 2015-11-09 | 2015-12-17 | 39 | 37d |  | Installation Support | 72h | 5,400 |
| 42 | 1.1.6 | **ARKSMart Employee Training** | 11.5d | 2016-07-26 | 2016-08-10 | 100 | 0d |  |  | 102h | 45,900 |
| 43 | 1.1.6.1 | Tablet & Barcode Scanner Operation | 72h | 2016-07-26 | 2016-08-08 | 3, 24 | 0d |  | Software Team | 72h | 32,400 |
| 44 | 1.1.6.2 | Tablet Repair/Replacement | 20h | 2016-08-08 | 2016-08-10 | 3, 43 | 0d |  | Software Team | 20h | 9,000 |
| 45 | 1.1.6.3 | Barcode Scanner Replacement | 10h | 2016-08-08 | 2016-08-09 | 24, 43 | 1.25d |  | Software Team | 10h | 4,500 |
| 46 | 1.1.7 | **Branding** | 166.5d | 2015-11-02 | 2016-06-21 |  | 36d |  |  | 288h | 28,200 |
| 47 | 1.1.7.1 | Tablet Branding Design | 80h | 2015-11-02 | 2016-03-22 |  | 75.5d | 0d | Senior Software Engineer | 80h | 12,000 |
| 48 | 1.1.7.2 | **Acquire Branding** | 102d | 2015-11-02 | 2016-03-23 |  | 100.5d | 176.5d |  | 8h | 1,200 |
| 49 | 1.1.7.2.1 | Order/Purchase Branding for Tablets | 8h | 2016-03-22 | 2016-03-23 | 47 | 75.5d | 0d | Project Manager | 8h | 1,200 |
| 50 | 1.1.7.2.2 | Shipping | 80h | 2015-11-02 | 2015-11-16 |  | 191d |  |  |  |  |
| 51 | 1.1.7.3 | Install Tablet Branding | 200h | 2016-04-11 | 2016-06-21 | 8, 49 | 36d |  | Installation Support | 200h | 15,000 |
| 52 | 1.1.8 | **Documentation** | 150d | 2015-11-25 | 2016-06-21 |  | 36d |  |  | 80h | 24,000 |
| 53 | 1.1.8.1 | ARKSmart Network Configuration | 40h | 2015-11-25 | 2015-12-08 | 12 | 176d |  | Network Engineer | 40h | 6,000 |
| 54 | 1.1.8.2 | Software User Guide | 40h | 2016-06-15 | 2016-06-21 | 84 | 36d |  | Software Team | 40h | 18,000 |

| ID | WBS | Task | Duration | Start | Finish | Predecessors | Total slack | Resources | Work | Cost |
| --- | --- | --- | --- | --- | --- | --- | --- | --- | --- | --- |
| 55 | 1.2 | **Software** | 191d | 2015-11-02 | 2016-07-26 |  | 0d |  | 1552h | 356,400 |
| 56 | 1.2.1 | **Agile Sprint 1 - Software Requirements** | 2.5d | 2015-11-02 | 2015-11-04 |  | 0d |  | 20h | 4,200 |
| 57 | 1.2.1.1 | Develop Software Requirements | 16h | 2015-11-02 | 2015-11-04 |  | 0d | Senior Software Engineer | 16h | 2,400 |
| 58 | 1.2.1.2 | Work Product Inspection (WPI) - Software Requirements Review | 4h | 2015-11-04 | 2015-11-04 | 57 | 0d | Software Team | 4h | 1,800 |
| 59 | 1.2.2 | **Agile Sprint 2 - Software Architecture/Design** | 7.5d | 2015-11-05 | 2015-11-16 | 56 | 0d |  | 68h | 12,600 |
| 60 | 1.2.2.1 | Develop/Customize Architecture/Design | 40h | 2015-11-05 | 2015-11-11 |  | 0d | Senior Software Engineer | 40h | 6,000 |
| 61 | 1.2.2.2 | WPI - Software Design Review | 8h | 2015-11-12 | 2015-11-12 | 60 | 1.5d | Software Team | 8h | 3,600 |
| 62 | 1.2.2.3 | COTS Selection/Approval | 20h | 2015-11-12 | 2015-11-16 | 60 | 0d | Senior Software Engineer | 20h | 3,000 |
| 63 | 1.2.3 | **Agile Sprint 3 - Software Environment** | 2.5d | 2015-11-16 | 2015-11-18 | 59 | 0d |  | 36h | 16,200 |
| 64 | 1.2.3.1 | Software Lab Environment Setup | 16h | 2015-11-16 | 2015-11-18 |  | 0d | Software Team | 16h | 7,200 |
| 65 | 1.2.3.2 | Software Lab Environment Validation | 4h | 2015-11-18 | 2015-11-18 | 64 | 0d | Software Team | 4h | 1,800 |
| 66 | 1.2.3.3 | Test Tool Selection/Approval/Development | 16h | 2015-11-16 | 2015-11-18 |  | 0.5d | Software Team | 16h | 7,200 |
| 67 | 1.2.4 | **Agile Sprint 4 - Inventory System** | 44.5d | 2015-11-19 | 2016-01-20 | 63 | 0d |  | 356h | 61,800 |
| 68 | 1.2.4.1 | Inventory System Integration Development | 280h | 2015-11-19 | 2016-01-06 |  | 0d | Senior Software Engineer | 280h | 42,000 |
| 69 | 1.2.4.2 | **Testing** | 9d | 2016-01-07 | 2016-01-19 | 68 | 0d |  | 72h | 18,000 |
| 70 | 1.2.4.2.1 | Unit Level Testing | 48h | 2016-01-07 | 2016-01-14 |  | 0d | Senior Software Engineer | 48h | 7,200 |
| 71 | 1.2.4.2.2 | Component Level Testing | 24h | 2016-01-15 | 2016-01-19 | 70 | 0d | Software Team | 24h | 10,800 |
| 72 | 1.2.4.3 | WPI & Demo | 4h | 2016-01-20 | 2016-01-20 | 69 | 0d | Software Team | 4h | 1,800 |
| 73 | 1.2.5 | **Agile Sprint 5 - Customer Loyalty** | 44.5d | 2016-01-20 | 2016-03-22 | 67 | 0d |  | 356h | 61,800 |
| 74 | 1.2.5.1 | Customer Loyalty System Integration Development | 280h | 2016-01-20 | 2016-03-09 |  | 0d | Senior Software Engineer | 280h | 42,000 |
| 75 | 1.2.5.2 | **Testing** | 9d | 2016-03-09 | 2016-03-22 | 74 | 0d |  | 72h | 18,000 |
| 76 | 1.2.5.2.1 | Unit Level Testing | 48h | 2016-03-09 | 2016-03-17 |  | 0d | Senior Software Engineer | 48h | 7,200 |
| 77 | 1.2.5.2.2 | Component Level Testing | 24h | 2016-03-17 | 2016-03-22 | 76 | 0d | Software Team | 24h | 10,800 |
| 78 | 1.2.5.3 | WPI & Demo | 4h | 2016-03-22 | 2016-03-22 | 75 | 0d | Software Team | 4h | 1,800 |

| ID | WBS | Task | Duration | Start | Finish | Predecessors | Total slack | Resources | Work | Cost |
| --- | --- | --- | --- | --- | --- | --- | --- | --- | --- | --- |
| 79 | 1.2.6 | **Agile Sprint 6 - Integration/Test** | 10.5d | 2016-03-23 | 2016-04-06 | 73 | 0d |  | 84h | 37,800 |
| 80 | 1.2.6.1 | **System Level Integration Testing** | 10d | 2016-03-23 | 2016-04-05 |  | 0d |  | 80h | 36,000 |
| 81 | 1.2.6.1.1 | Customer Loyalty System Integration Testing | 40h | 2016-03-23 | 2016-03-29 |  | 0d | Software Team | 40h | 18,000 |
| 82 | 1.2.6.1.2 | Inventory System Integration Testing | 40h | 2016-03-30 | 2016-04-05 | 81 | 0d | Software Team | 40h | 18,000 |
| 83 | 1.2.6.2 | WPI & Demo | 4h | 2016-04-06 | 2016-04-06 | 80 | 0d | Software Team | 4h | 1,800 |
| 84 | 1.2.7 | **Agile Sprint 7 - OCF Smart Cart Software** | 49.5d | 2016-04-06 | 2016-06-14 | 79 | 0d |  | 396h | 67,800 |
| 85 | 1.2.7.1 | OCF Smart Cart System Integration Development | 280h | 2016-04-06 | 2016-05-25 |  | 0d | Senior Software Engineer | 280h | 42,000 |
| 86 | 1.2.7.2 | Software Customization | 40h | 2016-05-25 | 2016-06-01 | 85 | 0d | Senior Software Engineer | 40h | 6,000 |
| 87 | 1.2.7.3 | **Testing** | 9d | 2016-06-01 | 2016-06-14 | 86 | 0d |  | 72h | 18,000 |
| 88 | 1.2.7.3.1 | Unit Level Testing | 48h | 2016-06-01 | 2016-06-09 |  | 0d | Senior Software Engineer | 48h | 7,200 |
| 89 | 1.2.7.3.2 | Component Level Testing | 24h | 2016-06-09 | 2016-06-14 | 88 | 0d | Software Team | 24h | 10,800 |
| 90 | 1.2.7.4 | WPI & Demo | 4h | 2016-06-14 | 2016-06-14 | 87 | 0d | Software Team | 4h | 1,800 |
| 91 | 1.2.8 | **Agile Sprint 8 - OCF Integration/Test** | 5.5d | 2016-06-15 | 2016-06-22 | 84 | 0d |  | 44h | 7,800 |
| 92 | 1.2.8.1 | **System Level Integration Testing** | 5d | 2016-06-15 | 2016-06-21 |  | 0d |  | 40h | 6,000 |
| 93 | 1.2.8.1.1 | OCF Smart Cart System Integration Testing | 40h | 2016-06-15 | 2016-06-21 |  | 0d | Senior Software Engineer | 40h | 6,000 |
| 94 | 1.2.8.2 | WPI & Demo | 4h | 2016-06-22 | 2016-06-22 | 92 | 0d | Software Team | 4h | 1,800 |
| 95 | 1.2.9 | **Agile Sprint 9 - Software Installation** | 14d | 2016-06-22 | 2016-07-12 | 91 | 0d |  | 112h | 50,400 |
| 96 | 1.2.9.1 | Install Customer Loyalty System Integration Software | 40h | 2016-06-22 | 2016-06-29 |  | 0d | Software Team | 40h | 18,000 |
| 97 | 1.2.9.2 | Install Inventory System Integration Software | 40h | 2016-06-29 | 2016-07-06 | 96 | 0d | Software Team | 40h | 18,000 |
| 98 | 1.2.9.3 | Install OCF Smart Cart Softtware | 24h | 2016-07-06 | 2016-07-11 | 97 | 0d | Software Team | 24h | 10,800 |
| 99 | 1.2.9.4 | WPI & Demo | 8h | 2016-07-11 | 2016-07-12 | 98 | 0d | Software Team | 8h | 3,600 |
| 100 | 1.2.10 | Acceptance Testing | 80h | 2016-07-12 | 2016-07-26 | 95 | 0d | Software Team | 80h | 36,000 |
